How a schedule from GanttProject changed from version to version. A marks actual dates.

## Version 1 (saved 2009-07-25)

Note of the change: Current plans and progress.

| ID | WBS | Task | Duration | Start | Finish | Predecessors | Complete |
| --- | --- | --- | --- | --- | --- | --- | --- |
| 1 |  | Draft Spec Received | 0d | 2009-05-08 | 2009-05-08 |  |  |
| 2 |  | Spec clarification & Requirements Analysis | 14d | 2009-05-11 | 2009-05-28 | 1 | 100% |
| 3 | 3 | **Code and Unit Test** | 41d | 2009-06-01 | 2009-07-27 | 2 | 80% |
| 4 |  | Text input validation framework | 12d | 2009-06-01 | 2009-06-16 |  | 100% |
| 5 |  | Model-observer framework, initial GUI | 14d | 2009-06-01 | 2009-06-18 |  | 100% |
| 6 |  | GUI mockups and incorporation of feedback | 16d | 2009-06-19 | 2009-07-10 |  | 100% |
| 7 |  | Simple format input and text reader framework | 23d | 2009-06-11 | 2009-07-13 |  | 100% |
| 8 |  | AAVSO Download format input | 2d | 2009-07-10 | 2009-07-13 |  | 100% |
| 9 |  | SQL expts for views, separate & combined tables | 8d | 2009-06-26 | 2009-07-07 |  | 100% |
| 10 |  | Raw data plot and table | 7d | 2009-06-15 | 2009-06-23 |  | 100% |
| 11 |  | Raw data means plot and table | 5d | 2009-07-20 | 2009-07-24 |  | 75% |
| 12 |  | Phase plot and table | 3d | 2009-07-23 | 2009-07-27 |  |  |
| 13 |  | Phase plot and table (means) | 3d | 2009-07-23 | 2009-07-27 |  |  |
| 14 |  | Saving plots & tables | 7d | 2009-07-13 | 2009-07-21 |  | 50% |
| 15 |  | Printing plots & tables | 7d | 2009-07-13 | 2009-07-21 |  | 75% |
| 16 |  | AAVSO Database input | 3d | 2009-07-23 | 2009-07-27 |  |  |
| 17 |  | Single observation details from plot | 1d | 2009-07-27 | 2009-07-27 |  |  |
| 18 |  | Marking observation as discrepant (plot & table) | 1d | 2009-07-27 | 2009-07-27 |  |  |
| 19 |  | Visually joining observer data | 1d | 2009-07-27 | 2009-07-27 |  |  |
| 20 |  | Time panning (when mode is AID) | 1d | 2009-07-27 | 2009-07-27 |  |  |
| 21 |  | Zooming (more control than default chart zoom) | 1d | 2009-07-27 | 2009-07-27 |  |  |
| 22 |  | Category (band, fainter-than) colors (default, chooser) | 2d | 2009-07-24 | 2009-07-27 |  |  |
| 23 |  | Preferences (e.g. window size & position, band colors) | 1d | 2009-07-27 | 2009-07-27 |  |  |
| 24 |  | Web Start (JNLP) | 1d | 2009-07-27 | 2009-07-27 |  |  |
| 25 | 4 | **Documentation** | 6d | 2009-07-24 | 2009-07-31 |  | 5% |
| 26 |  | HTML for Help menu item | 6d | 2009-07-24 | 2009-07-31 |  | 5% |
| 27 | 5 | **Testing** | 34d | 2009-06-23 | 2009-08-07 |  | 8% |
| 28 |  | System Testing | 33d | 2009-06-23 | 2009-08-06 |  | 10% |
| 29 |  | Acceptance Testing | 4d | 2009-08-04 | 2009-08-07 |  |  |
| 30 |  | CitizenSky Workshop 1 | 0d | 2009-08-04 | 2009-08-04 |  |  |

## Version 2 (saved 2009-07-25)

Note of the change: Added Bug Fix task under System Testing.

Last finish stays 2009-08-07.

Added:

| ID | Task | Duration | Start | Finish | Resources |
| --- | --- | --- | --- | --- | --- |
| 29 | Bug Fixes | 9d | 2009-07-27 | 2009-08-06 | David Benn |

## Version 3 (saved 2009-07-27)

Note of the change: Updated plans with Tracker URL

Last finish stays 2009-08-07.

Changed:

| ID | Task | Other |
| --- | --- | --- |
| 7 | Simple format input and observation reader framework | was named Simple format input and text reader framework |
| 29 | Bug Fixes (https://sourceforge.net/tracker/?func=browse&group_id=263306&atid=1152052) | was named Bug Fixes |

## Version 4 (saved 2009-07-27)

Note of the change: Updated %ge completion of database task.

Last finish stays 2009-08-07.

Changed:

| ID | Task | Complete |
| --- | --- | --- |
| 3 | **Code and Unit Test** | 80% → 79% |
| 16 | AAVSO Database input | 0% → 20% |

## Version 5 (saved 2009-07-28)

Note of the change: Updated plans, progress

Last finish stays 2009-08-07.

Added:

| ID | Task | Duration | Start | Finish |
| --- | --- | --- | --- | --- |
| 17 | AID observation reader | 4d | 2009-07-23 | 2009-07-28 |
| 18 | 10 Stars Selection | 1d | 2009-07-29 | 2009-07-29 |
| 19 | Arbitrary star selection | 1d | 2009-07-31 | 2009-07-31 |
| 20 | Obscode lookup via CitizenSky login | 1d | 2009-07-31 | 2009-07-31 |

Changed:

| ID | Task | Start | Finish | Duration | Complete | Other |
| --- | --- | --- | --- | --- | --- | --- |
| 3 | **Code and Unit Test** |  | 2009-07-27 → 2009-07-31 (+4d) | 41d → 45d | 79% → 77% |  |
| 11 | Phase plot and table | 2009-07-23 → 2009-07-30 (+7d) | 2009-07-27 → 2009-07-31 (+4d) | 3d → 2d |  |  |
| 12 | Phase plot and table (means) | 2009-07-23 → 2009-07-30 (+7d) | 2009-07-27 → 2009-07-31 (+4d) | 3d → 2d |  |  |
| 15 | **AAVSO Database input** | 2009-07-23 → 2009-06-26 (-27d) | 2009-07-27 → 2009-07-31 (+4d) | 3d → 26d | 20% → 0% |  |
| 16 | SQL: view experiments, obs query tweaking |  |  |  |  | was named SQL expts for views, separate & combined tables |
| 21 | Time panning (when mode is AID) | 2009-07-27 → 2009-07-31 (+4d) | 2009-07-27 → 2009-07-31 (+4d) |  |  |  |
| 22 | Single observation details by clicking point on plot | 2009-07-27 → 2009-07-29 (+2d) | 2009-07-27 → 2009-07-29 (+2d) |  |  | was named Single observation details from plot |
| 23 | Marking observation as discrepant (plot & table) | 2009-07-27 → 2009-07-29 (+2d) | 2009-07-27 → 2009-07-29 (+2d) |  |  |  |
| 24 | Visually joining observer data (from selected ob or login) | 2009-07-27 → 2009-07-29 (+2d) | 2009-07-27 → 2009-07-29 (+2d) |  |  | was named Visually joining observer data |
| 25 | Zooming (more control than default chart zoom) | 2009-07-27 → 2009-07-31 (+4d) | 2009-07-27 → 2009-07-31 (+4d) |  |  |  |
| 26 | Category (band, fainter-than) colors (default, chooser) | 2009-07-24 → 2009-07-30 (+6d) | 2009-07-27 → 2009-07-31 (+4d) |  |  |  |
| 27 | Preferences (e.g. window size & position, band colors) | 2009-07-27 → 2009-07-31 (+4d) | 2009-07-27 → 2009-07-31 (+4d) |  |  |  |
| 28 | Web Start (JNLP) | 2009-07-27 → 2009-07-31 (+4d) | 2009-07-27 → 2009-07-31 (+4d) |  |  |  |

## Version 6 (saved 2009-07-30)

Note of the change: Updated plans

Last finish 2009-08-07 → 2009-08-06 (-1d). Complete tasks 8 → 9.

Changed:

| ID | Task | Start | Finish | Duration | Complete | Other |
| --- | --- | --- | --- | --- | --- | --- |
| 2 | Spec clarification & Requirements Analysis |  |  |  |  | resources David Benn; Sara Beck → none |
| 3 | **Code and Unit Test** |  |  |  | 77% → 79% | resources David Benn → none |
| 11 | Phase plot and table | 2009-07-30 → 2009-07-28 (-2d) |  | 2d → 4d |  |  |
| 12 | Phase plot and table (means) | 2009-07-30 → 2009-07-29 (-1d) |  | 2d → 3d |  |  |
| 15 | **AAVSO Database input** |  |  |  | 0% → 77% |  |
| 17 | AID observation reader |  | 2009-07-28 → 2009-07-30 (+2d) | 4d → 6d | 0% → 100% |  |
| 18 | 10 Stars Selection | 2009-07-29 → 2009-07-31 (+2d) | 2009-07-29 → 2009-07-31 (+2d) |  |  |  |
| 24 | Visually joining observer data (from selected ob or login) | 2009-07-29 → 2009-07-30 (+1d) | 2009-07-29 → 2009-07-30 (+1d) |  |  |  |
| 25 | Zooming (more control than default chart zoom) | 2009-07-31 → 2009-07-30 (-1d) | 2009-07-31 → 2009-07-30 (-1d) |  |  |  |
| 26 | Category (band, fainter-than) colors (default, chooser) | 2009-07-30 → 2009-07-29 (-1d) | 2009-07-31 → 2009-07-30 (-1d) |  |  |  |
| 27 | Preferences (e.g. window size & position, band colors) | 2009-07-31 → 2009-07-30 (-1d) | 2009-07-31 → 2009-07-30 (-1d) |  |  |  |
| 28 | Web Start (JNLP) | 2009-07-31 → 2009-07-30 (-1d) | 2009-07-31 → 2009-07-30 (-1d) |  | 0% → 50% |  |
| 30 | HTML for Help menu item |  |  |  |  | resources Michael Umbricht [25%] → none |
| 31 | **Testing** |  | 2009-08-07 → 2009-08-06 (-1d) | 34d → 33d |  |  |
| 32 | System Testing |  |  |  |  | resources Michael Umbricht [75%]; Elizabeth Waagen [50%]; Aaron Price; Michael Kran → none |
| 33 | Bug Fixes (https://sourceforge.net/tracker/?func=browse&group_id=263306&atid=1152052) |  |  |  |  | resources David Benn → none |
| 34 | Acceptance Testing |  | 2009-08-07 → 2009-08-06 (-1d) | 4d → 3d |  |  |

## Version 7 (saved 2009-09-19)

Note of the change: Updated remaining and partially completed tasks with possible start dates and approximate durations.

Last finish 2009-08-06 → 2009-09-29 (+54d). Complete tasks 9 → 11.

Removed: 33 Bug Fixes (https://sourceforge.net/tracker/?func=browse&group_id=263306&atid=1152052)

Changed:

| ID | Task | Start | Finish | Duration | Complete | Other |
| --- | --- | --- | --- | --- | --- | --- |
| 3 | **Code and Unit Test** |  | 2009-07-31 → 2009-09-29 (+60d) | 45d → 87d | 79% → 76% |  |
| 11 | Phase plot and table | 2009-07-28 → 2009-09-21 (+55d) | 2009-07-31 → 2009-09-28 (+59d) | 4d → 6d |  |  |
| 12 | Phase plot and table (means) | 2009-07-29 → 2009-09-24 (+57d) | 2009-07-31 → 2009-09-28 (+59d) |  |  |  |
| 14 | Printing plots & tables |  |  |  | 75% → 100% |  |
| 15 | **AAVSO Database input** |  | 2009-07-31 → 2009-09-29 (+60d) | 26d → 68d |  |  |
| 19 | Arbitrary star selection | 2009-07-31 → 2009-09-21 (+52d) | 2009-07-31 → 2009-09-21 (+52d) |  |  |  |
| 20 | Obscode lookup via CitizenSky login | 2009-07-31 → 2009-09-21 (+52d) | 2009-07-31 → 2009-09-21 (+52d) |  |  |  |
| 21 | Time panning (when database is source) | 2009-07-31 → 2009-09-23 (+54d) | 2009-07-31 → 2009-09-29 (+60d) | 1d → 5d |  | was named Time panning (when mode is AID) |
| 22 | Single observation details by clicking point on plot | 2009-07-29 → 2009-08-10 (+12d) | 2009-07-29 → 2009-08-24 (+26d) | 1d → 11d | 0% → 100% |  |
| 24 | Visually joining observer data (from selected ob or login) | 2009-07-30 → 2009-09-22 (+54d) | 2009-07-30 → 2009-09-28 (+60d) | 1d → 5d |  |  |
| 25 | Zooming (more control than default chart zoom) | 2009-07-30 → 2009-09-23 (+55d) | 2009-07-30 → 2009-09-29 (+61d) | 1d → 5d |  |  |
| 26 | Category (band, fainter-than) colors (default, chooser) | 2009-07-29 → 2009-09-23 (+56d) | 2009-07-30 → 2009-09-28 (+60d) | 2d → 4d | 0% → 24% |  |
| 27 | Preferences (e.g. window size & position, band colors) | 2009-07-30 → 2009-09-22 (+54d) | 2009-07-30 → 2009-09-28 (+60d) | 1d → 5d |  |  |

## Version 8 (saved 2009-11-03)

Note of the change: Updated dates and tasks to match the current reality.

Last finish 2009-09-29 → 2009-12-01 (+63d). Complete tasks 11 → 13.

Changed:

| ID | Task | Start | Finish | Duration | Complete |
| --- | --- | --- | --- | --- | --- |
| 3 | **Code and Unit Test** |  | 2009-09-29 → 2009-12-01 (+63d) | 87d → 132d | 76% → 83% |
| 11 | Phase plot and table | 2009-09-21 → 2009-10-26 (+35d) | 2009-09-28 → 2009-10-28 (+30d) | 6d → 3d |  |
| 12 | Phase plot and table (means) | 2009-09-24 → 2009-10-27 (+33d) | 2009-09-28 → 2009-10-28 (+30d) | 3d → 2d |  |
| 15 | **AAVSO Database input** |  | 2009-09-29 → 2009-11-13 (+45d) | 68d → 101d | 77% → 90% |
| 18 | 10 Stars Selection |  |  |  | 0% → 100% |
| 19 | Arbitrary star selection |  | 2009-09-21 → 2009-10-23 (+32d) | 1d → 25d | 0% → 100% |
| 20 | Obscode lookup via CitizenSky login | 2009-09-21 → 2009-11-10 (+50d) | 2009-09-21 → 2009-11-10 (+50d) |  |  |
| 21 | Time panning (when database is source) | 2009-09-23 → 2009-11-11 (+49d) | 2009-09-29 → 2009-11-13 (+45d) | 5d → 3d |  |
| 23 | Marking observation as discrepant (plot & table) | 2009-07-29 → 2009-11-09 (+103d) | 2009-07-29 → 2009-11-09 (+103d) |  | 0% → 10% |
| 24 | Visually joining observer data (from selected ob or login) | 2009-09-22 → 2009-11-13 (+52d) | 2009-09-28 → 2009-11-16 (+49d) | 5d → 2d |  |
| 25 | Zooming (more control than default chart zoom) | 2009-09-23 → 2009-11-17 (+55d) | 2009-09-29 → 2009-11-24 (+56d) | 5d → 6d |  |
| 27 | Preferences (e.g. window size & position, band colors) | 2009-09-22 → 2009-11-25 (+64d) | 2009-09-28 → 2009-12-01 (+64d) |  |  |

## Version 9 (saved 2009-11-03)

Note of the change: Changed "blue" (partially complete) to "orange" tasks for simplicity of presentation.

Last finish 2009-12-01 → 2009-11-25 (-6d).

Changed:

| ID | Task | Start | Finish | Duration | Complete |
| --- | --- | --- | --- | --- | --- |
| 3 | **Code and Unit Test** |  | 2009-12-01 → 2009-11-25 (-6d) | 132d → 128d |  |
| 11 | Phase plot and table | 2009-10-26 → 2009-11-02 (+7d) | 2009-10-28 → 2009-11-04 (+7d) |  |  |
| 12 | Phase plot and table (means) | 2009-10-27 → 2009-11-03 (+7d) | 2009-10-28 → 2009-11-04 (+7d) |  |  |
| 26 | Category (band, fainter-than) colors (default, chooser) |  |  |  | 24% → 25% |
| 27 | Preferences (e.g. window size & position, band colors) | 2009-11-25 → 2009-11-19 (-6d) | 2009-12-01 → 2009-11-25 (-6d) |  |  |

## Version 10 (saved 2010-12-19)

Note of the change: Recreation of trunk from 18 Dec version 2.10 tag after accidental deletion

Last finish 2009-11-25 → 2010-01-04 (+40d). Complete tasks 13 → 17.

Changed:

| ID | Task | Start | Finish | Duration | Complete |
| --- | --- | --- | --- | --- | --- |
| 3 | **Code and Unit Test** |  | 2009-11-25 → 2010-01-04 (+40d) | 128d → 156d | 83% → 93% |
| 11 | Phase plot and table | 2009-11-02 → 2009-10-27 (-6d) | 2009-11-04 → 2009-12-29 (+55d) | 3d → 46d | 0% → 100% |
| 12 | Phase plot and table (means) | 2009-11-03 → 2009-10-22 (-12d) | 2009-11-04 → 2010-01-04 (+61d) | 2d → 53d | 0% → 100% |
| 26 | Category (band, fainter-than) colors (default, chooser) |  | 2009-09-28 → 2009-11-12 (+45d) | 4d → 37d | 25% → 100% |
| 27 | Preferences (e.g. window size & position, band colors) | 2009-11-19 → 2009-11-18 (-1d) | 2009-11-25 → 2009-11-24 (-1d) |  |  |
| 28 | Web Start (JNLP) |  | 2009-07-30 → 2009-12-04 (+127d) | 1d → 92d | 50% → 100% |
